# ProjectCine

Schedule from MS Project, 2021-03-30 to 2022-01-31, status date 2021-05-03, costs in €, A marks actual dates.

## Calendars

- Estándar: Mon-Fri 09:00-13:00, 15:00-19:00; Sat-Sun off.

## Resources

| Resource | Rate | Cost per use | Notes |
| --- | --- | --- | --- |
| Analistas Sistemas | 16.41 |  |  |
| Ing. Computadores | 15.36 |  |  |
| Ing. Informáticos | 13.04 |  |  |
| Becarios | 6.71 |  |  |
| Programadores | 10 |  |  |
| Impresoras |  | 200 |  |
| Ordenadores |  | 500 |  |
| Internet |  | 1200 |  |
| Licencias Software |  | 1000 |  |
| Mobiliario |  | 260 | mesa escritorio: 100€ / silla de trabajo: 150€ / regleta: 10€ |
| Ing. Ciberseguridad | 16.22 |  |  |
| Teleoperadores | 5.3 |  |  |
| Ing. Software | 14.25 |  |  |
| Servidor |  | 5000 |  |
| Base de datos (licencia) | 0.57 |  |  |
| Sala Servidor | 3 |  |  |

## Schedule

| ID | WBS | Task | Duration | Start | Finish | Predecessors | Complete | Remaining | Baseline start | Baseline finish | Baseline duration | Total slack | Resources | Work | Actual work | Cost | Baseline cost | Actual cost |
| --- | --- | --- | --- | --- | --- | --- | --- | --- | --- | --- | --- | --- | --- | --- | --- | --- | --- | --- |
| 1 | 1 | **Gestion de Cines** | 219.25d | 2021-03-30 09:00 A | 2022-01-31 11:00 |  | 13% | 190.7d | 2021-03-30 09:00 | 2022-01-31 11:00 | 219.25d | 0d | Impresoras; Internet | 11822h | 284.8h | 80,641.38 | 80,641.38 | 4,984.37 |
| 2 | 1.1 | **Fase de diseño del producto** | 42d | 2021-03-30 09:00 A | 2021-05-26 19:00 |  | 57% | 18.26d | 2021-03-30 09:00 | 2021-05-26 19:00 | 42d | 0d |  | 432h | 284.8h | 5,094.46 | 5,094.46 | 3,584.37 |
| 3 | 1.1.1 | **Inicio** | 20.75d | 2021-03-30 09:00 A | 2021-04-27 17:00 |  | 96% | 0.83d | 2021-03-30 09:00 | 2021-04-27 17:00 | 20.75d | 0d |  | 262h | 252.8h | 3,192.56 | 3,192.56 | 3,092.85 |
| 4 | 1.1.1.1 | **Crear la vision del proyecto** | 9d | 2021-03-30 09:00 A | 2021-04-09 19:00 A |  | 100% |  | 2021-03-30 09:00 | 2021-04-09 19:00 | 9d |  |  | 88h | 88h | 1,185.2 | 1,185.2 | 1,185.2 |
| 5 | 1.1.1.1.1 | Análisis de la infraestructura actual | 3d | 2021-03-30 09:00 A | 2021-04-01 19:00 A |  | 100% |  | 2021-03-30 09:00 | 2021-04-01 19:00 | 3d |  | Analistas Sistemas | 24h | 24h | 393.84 | 393.84 | 393.84 |
| 6 | 1.1.1.1.2 | Consulta de detalles con el cliente | 2d | 2021-03-30 09:00 A | 2021-03-31 19:00 A | 5SS | 100% |  | 2021-03-30 09:00 | 2021-03-31 19:00 | 2d |  | Becarios | 16h | 16h | 107.36 | 107.36 | 107.36 |
| 7 | 1.1.1.1.3 | Establecimiento de los paquetes de trabajo | 3d | 2021-04-02 09:00 A | 2021-04-06 19:00 A | 5 | 100% |  | 2021-04-02 09:00 | 2021-04-06 19:00 | 3d |  | Ing. Software | 24h | 24h | 342 | 342 | 342 |
| 8 | 1.1.1.1.4 | Determinar los objetivos | 3d | 2021-04-07 09:00 A | 2021-04-09 19:00 A | 7 | 100% |  | 2021-04-07 09:00 | 2021-04-09 19:00 | 3d |  | Ing. Software | 24h | 24h | 342 | 342 | 342 |
| 9 | 1.1.1.2 | **Identificar a los Master Scrum o ScrumMaster y a los stakeholders** | 2d | 2021-03-30 09:00 A | 2021-03-31 19:00 A | 4SS | 100% |  | 2021-03-30 09:00 | 2021-03-31 19:00 | 2d |  | Ing. Software | 16h | 16h | 228 | 228 | 228 |
| 10 | 1.1.1.2.1 | Identificación del personal | 1d | 2021-03-30 09:00 A | 2021-03-30 19:00 A |  | 100% |  | 2021-03-30 09:00 | 2021-03-30 19:00 | 1d |  |  |  |  |  |  |  |
| 11 | 1.1.1.2.2 | Establecimiento de roles de trabajo | 1d | 2021-03-31 09:00 A | 2021-03-31 19:00 A | 10 | 100% |  | 2021-03-31 09:00 | 2021-03-31 19:00 | 1d |  |  |  |  |  |  |  |
| 12 | 1.1.1.2.3 | Revisar que se disponga de todo el personal necesario | 1h | 2021-03-30 09:00 A | 2021-03-30 10:00 A | 10SS | 100% |  | 2021-03-30 09:00 | 2021-03-30 10:00 | 1h |  |  |  |  |  |  |  |
| 13 | 1.1.1.3 | **Formar equipos Scrum** | 2d | 2021-04-01 09:00 A | 2021-04-02 19:00 A | 9 | 100% |  | 2021-04-01 09:00 | 2021-04-02 19:00 | 2d |  | Becarios | 16h | 16h | 107.36 | 107.36 | 107.36 |
| 14 | 1.1.1.3.1 | Identificación del personal | 1d | 2021-04-01 09:00 A | 2021-04-01 19:00 A |  | 100% |  | 2021-04-01 09:00 | 2021-04-01 19:00 | 1d |  |  |  |  |  |  |  |
| 15 | 1.1.1.3.2 | Agrupación de los empleados formando equipos | 1d | 2021-04-02 09:00 A | 2021-04-02 19:00 A | 14 | 100% |  | 2021-04-02 09:00 | 2021-04-02 19:00 | 1d |  |  |  |  |  |  |  |
| 16 | 1.1.1.4 | **Desarrollar épicas** | 2d | 2021-04-12 09:00 A | 2021-04-13 19:00 A | 13, 4, 9 | 100% |  | 2021-04-12 09:00 | 2021-04-13 19:00 | 2d |  | Analistas Sistemas; Ing. Software | 32h | 32h | 490.56 | 490.56 | 490.56 |
| 17 | 1.1.1.4.1 | Distinguir las épicas | 1d | 2021-04-12 09:00 A | 2021-04-12 19:00 A |  | 100% |  | 2021-04-12 09:00 | 2021-04-12 19:00 | 1d |  |  |  |  |  |  |  |
| 18 | 1.1.1.4.2 | Asignar los equipos | 1d | 2021-04-12 09:00 A | 2021-04-12 19:00 A | 17SS | 100% |  | 2021-04-12 09:00 | 2021-04-12 19:00 | 1d |  |  |  |  |  |  |  |
| 19 | 1.1.1.4.3 | Establecer fechas de cumplimiento | 1d | 2021-04-12 09:00 A | 2021-04-12 19:00 A | 17SS | 100% |  | 2021-04-12 09:00 | 2021-04-12 19:00 | 1d |  |  |  |  |  |  |  |
| 20 | 1.1.1.4.4 | Determinar el esfuerzo estimado | 1d | 2021-04-13 09:00 A | 2021-04-13 19:00 A | 17, 18, 19 | 100% |  | 2021-04-13 09:00 | 2021-04-13 19:00 | 1d |  |  |  |  |  |  |  |
| 21 | 1.1.1.5 | **Crear backlogs o listas de requerimientos priorizando el producto** | 6d | 2021-04-14 09:00 A | 2021-04-21 19:00 | 4, 9, 13, 16 | 93% | 0.4d | 2021-04-14 09:00 | 2021-04-21 19:00 | 6d | 0d | Becarios | 80h | 76.8h | 790.24 | 790.24 | 768.77 |
| 22 | 1.1.1.5.1 | Distinguir las actividades a realizar | 2d | 2021-04-14 09:00 A | 2021-04-15 19:00 A |  | 100% |  | 2021-04-14 09:00 | 2021-04-15 19:00 | 2d |  | Ing. Ciberseguridad; Ing. Informáticos | 32h | 32h | 468.16 | 468.16 | 468.16 |
| 23 | 1.1.1.5.2 | Distinguir tareas | 2d | 2021-04-16 09:00 A | 2021-04-19 19:00 A | 22 | 100% |  | 2021-04-16 09:00 | 2021-04-19 19:00 | 2d |  |  |  |  |  |  |  |
| 24 | 1.1.1.5.3 | Separar el trabajo en backlogs | 2d | 2021-04-20 09:00 A | 2021-04-21 19:00 | 23 | 80% | 0.4d | 2021-04-20 09:00 | 2021-04-21 19:00 | 2d | 0d |  |  |  |  |  |  |

| ID | WBS | Task | Type | Duration | Start | Finish | Predecessors | Complete | Remaining | Baseline start | Baseline finish | Baseline duration | Total slack | Resources | Work | Actual work | Cost | Baseline cost | Actual cost |
| --- | --- | --- | --- | --- | --- | --- | --- | --- | --- | --- | --- | --- | --- | --- | --- | --- | --- | --- | --- |
| 25 | 1.1.1.6 | **Planificar el lanzamiento** |  | 3.75d | 2021-04-22 09:00 A | 2021-04-27 17:00 | 21 | 80% | 0.75d | 2021-04-22 09:00 | 2021-04-27 17:00 | 3.75d | 0d | Ing. Informáticos | 30h | 24h | 391.2 | 391.2 | 312.96 |
| 26 | 1.1.1.6.1 | Ver días hábiles |  | 8h | 2021-04-22 09:00 A | 2021-04-22 19:00 A |  | 100% |  | 2021-04-22 09:00 | 2021-04-22 19:00 | 8h |  |  |  |  |  |  |  |
| 27 | 1.1.1.6.2 | Establecer los turnos de trabajo |  | 16h | 2021-04-23 09:00 A | 2021-04-26 19:00 A | 26 | 100% |  | 2021-04-23 09:00 | 2021-04-26 19:00 | 16h |  |  |  |  |  |  |  |
| 28 | 1.1.1.6.3 | Colocar las fechas clave |  | 6h | 2021-04-27 09:00 | 2021-04-27 17:00 | 27 |  |  | 2021-04-27 09:00 | 2021-04-27 17:00 | 6h | 0d |  |  |  |  |  |  |
| 29 | 1.1.2 | **Planificación y estimación** |  | 21.25d | 2021-04-27 17:00 A | 2021-05-26 19:00 | 3 | 15% | 18.13d | 2021-04-27 17:00 | 2021-05-26 19:00 | 21.25d | 0d |  | 170h | 32h | 1,901.9 | 1,901.9 | 491.52 |
| 30 | 1.1.2.1 | **Crear, estimar y comprometer historias de usuario** |  | 11d | 2021-04-27 17:00 A | 2021-05-12 17:00 |  | 36% | 7d | 2021-04-27 17:00 | 2021-05-12 17:00 | 11d | 0d | Ing. Computadores | 88h | 32h | 1,351.68 | 1,351.68 | 491.52 |
| 31 | 1.1.2.1.1 | Especificar las funciones del software |  | 5d | 2021-04-27 17:00 A | 2021-05-04 17:00 |  | 80% | 1d | 2021-04-27 17:00 | 2021-05-04 17:00 | 5d | 0d |  |  |  |  |  |  |
| 32 | 1.1.2.1.2 | Explicar resultado final del proyecto |  | 6d | 2021-05-04 17:00 | 2021-05-12 17:00 | 31 |  |  | 2021-05-04 17:00 | 2021-05-12 17:00 | 6d | 0d |  |  |  |  |  |  |
| 33 | 1.1.2.2 | **Identificar y estimar tareas** |  | 8.25d | 2021-05-12 17:00 | 2021-05-24 19:00 | 30 |  |  | 2021-05-12 17:00 | 2021-05-24 19:00 | 8.25d | 0d | Becarios | 66h |  | 442.86 | 442.86 |  |
| 34 | 1.1.2.2.1 | Identificar tareas |  | 4.25d | 2021-05-12 17:00 | 2021-05-18 19:00 |  |  |  | 2021-05-12 17:00 | 2021-05-18 19:00 | 4.25d | 0d |  |  |  |  |  |  |
| 35 | 1.1.2.2.2 | Asignar responsables |  | 3d | 2021-05-19 09:00 | 2021-05-21 19:00 | 34 |  |  | 2021-05-19 09:00 | 2021-05-21 19:00 | 3d | 1d |  |  |  |  |  |  |
| 36 | 1.1.2.2.3 | Estimar un tiempo parcial |  | 4d | 2021-05-19 09:00 | 2021-05-24 19:00 | 34 |  |  | 2021-05-19 09:00 | 2021-05-24 19:00 | 4d | 0d |  |  |  |  |  |  |
| 37 | 1.1.2.2.4 | Estima tiempo final para completar las tareas |  | 3d | 2021-05-19 09:00 | 2021-05-21 19:00 | 34 |  |  | 2021-05-19 09:00 | 2021-05-21 19:00 | 3d | 1d |  |  |  |  |  |  |
| 38 | 1.1.2.3 | **Crear el sprint backlog o iteración de tareas** |  | 2d | 2021-05-25 09:00 | 2021-05-26 19:00 | 33 |  |  | 2021-05-25 09:00 | 2021-05-26 19:00 | 2d | 0d | Becarios | 16h |  | 107.36 | 107.36 |  |
| 39 | 1.1.2.3.1 | Identificar las diferentes tareas |  | 8h | 2021-05-25 09:00 | 2021-05-25 19:00 |  |  |  | 2021-05-25 09:00 | 2021-05-25 19:00 | 8h | 0d |  |  |  |  |  |  |
| 40 | 1.1.2.3.2 | Crear iteraciones de las tareas |  | 8h | 2021-05-26 09:00 | 2021-05-26 19:00 | 39 |  |  | 2021-05-26 09:00 | 2021-05-26 19:00 | 8h | 0d |  |  |  |  |  |  |
| 41 | 1.2 | Hito Desarrollo Completo | milestone | 0d | 2021-05-26 19:00 | 2021-05-26 19:00 | 2 |  |  | 2021-05-26 19:00 | 2021-05-26 19:00 | 0d | 0d |  |  |  |  |  |  |
| 42 | 1.3 | **Fase de programacion** |  | 132.25d | 2021-05-27 09:00 | 2021-11-29 11:00 | 41 |  |  | 2021-05-27 09:00 | 2021-11-29 11:00 | 132.25d | 0d |  | 8942h |  | 67,027.32 | 67,027.32 |  |
| 43 | 1.3.1 | **Implementación** |  | 132.25d | 2021-05-27 09:00 | 2021-11-29 11:00 | 29 |  |  | 2021-05-27 09:00 | 2021-11-29 11:00 | 132.25d | 0d | Impresoras [200%]; Licencias Software; Base de datos (licencia); Mobiliario [500%]; Ordenadores [500%]; Sala Servidor; Servidor; Teleoperadores [500%]; Programadores | 8942h |  | 67,027.32 | 67,027.32 |  |
| 44 | 1.3.1.1 | **Crear entregables** |  | 3.38d | 2021-05-27 09:00 | 2021-06-01 12:00 |  |  |  | 2021-05-27 09:00 | 2021-06-01 12:00 | 3.38d | 0d |  | 27h |  | 301.81 | 301.81 |  |
| 45 | 1.3.1.1.1 | Cambiar el estado de los entregables a "Por hacer" |  | 11h | 2021-05-27 09:00 | 2021-05-28 12:00 |  |  |  | 2021-05-27 09:00 | 2021-05-28 12:00 | 11h | 0d | Becarios | 11h |  | 73.81 | 73.81 |  |
| 46 | 1.3.1.1.2 | Asignar responsables |  | 16h | 2021-05-28 12:00 | 2021-06-01 12:00 | 45 |  |  | 2021-05-28 12:00 | 2021-06-01 12:00 | 16h | 0d | Ing. Software | 16h |  | 228 | 228 |  |
| 47 | 1.3.1.2 | **Realizar daily stand-up** |  | 3.88d | 2021-06-01 12:00 | 2021-06-07 11:00 | 44 |  |  | 2021-06-01 12:00 | 2021-06-07 11:00 | 3.88d | 0d | Ing. Software | 31h |  | 441.75 | 441.75 |  |
| 48 | 1.3.1.2.1 | Reunión diaria durante la ejecución del Sprint |  | 15h | 2021-06-01 12:00 | 2021-06-03 11:00 |  |  |  | 2021-06-01 12:00 | 2021-06-03 11:00 | 15h | 0d |  |  |  |  |  |  |
| 49 | 1.3.1.2.2 | Actualización de los progresos del sprint |  | 16h | 2021-06-03 11:00 | 2021-06-07 11:00 | 48 |  |  | 2021-06-03 11:00 | 2021-06-07 11:00 | 16h | 0d |  |  |  |  |  |  |

| ID | WBS | Task | Type | Duration | Start | Finish | Predecessors | Baseline start | Baseline finish | Baseline duration | Total slack | Constraint | Resources | Work | Cost | Baseline cost |
| --- | --- | --- | --- | --- | --- | --- | --- | --- | --- | --- | --- | --- | --- | --- | --- | --- |
| 50 | 1.3.1.3 | **Refinamiento del backlog priorizado del producto** |  | 125d | 2021-06-07 11:00 | 2021-11-29 11:00 | 47 | 2021-06-07 11:00 | 2021-11-29 11:00 | 125d | 0d |  | Becarios; Ing. Informáticos | 2000h | 19,750 | 19,750 |
| 51 | 1.3.1.3.1 | Refinar de manera sistemática los productos de la cartera de productos |  | 125d | 2021-06-07 11:00 | 2021-11-29 11:00 |  | 2021-06-07 11:00 | 2021-11-29 11:00 | 125d | 0d |  |  |  |  |  |
| 52 | 1.4 | Hito Programacion Terminada | milestone | 0d | 2021-11-29 11:00 | 2021-11-29 11:00 | 42 | 2021-11-29 11:00 | 2021-11-29 11:00 | 0d | 0d |  |  |  |  |  |
| 53 | 1.5 | **Fase de integracion y pruebas** |  | 45d | 2021-11-29 11:00 | 2022-01-31 11:00 | 52 | 2021-11-29 11:00 | 2022-01-31 11:00 | 45d | 0d |  |  | 2448h | 7,119.6 | 7,119.6 |
| 54 | 1.5.1 | **Revisión y retrospectiva** |  | 33d | 2021-11-29 11:00 | 2022-01-13 11:00 | 52 | 2021-11-29 11:00 | 2022-01-13 11:00 | 33d | 0d |  | Base de datos (licencia); Sala Servidor | 2160h | 3,855.6 | 3,855.6 |
| 55 | 1.5.1.1 | **Demostrar y validar el sprint** |  | 7d | 2021-11-29 11:00 | 2021-12-08 11:00 |  | 2021-11-29 11:00 | 2021-12-08 11:00 | 7d | 0d |  |  |  |  |  |
| 56 | 1.5.1.1.1 | Probar que el sprint es correcto |  | 7d | 2021-11-29 11:00 | 2021-12-08 11:00 |  | 2021-11-29 11:00 | 2021-12-08 11:00 | 7d | 0d |  |  |  |  |  |
| 57 | 1.5.1.2 | **Retrospectiva del sprint** |  | 26d | 2021-12-08 11:00 | 2022-01-13 11:00 | 55 | 2021-12-08 11:00 | 2022-01-13 11:00 | 26d | 0d |  |  |  |  |  |
| 58 | 1.5.1.2.1 | Comprobar el funcionamiento en el último Sprint |  | 7d | 2021-12-08 11:00 | 2021-12-17 11:00 |  | 2021-12-08 11:00 | 2021-12-17 11:00 | 7d | 0d |  |  |  |  |  |
| 59 | 1.5.1.2.2 | Qué hay que mejorar para el siguiente Sprint |  | 7d | 2021-12-17 11:00 | 2021-12-28 11:00 | 58 | 2021-12-17 11:00 | 2021-12-28 11:00 | 7d | 0d |  |  |  |  |  |
| 60 | 1.5.1.2.3 | Solucionar problemas del último Sprint para progresar |  | 8d | 2021-12-28 11:00 | 2022-01-07 11:00 | 59 | 2021-12-28 11:00 | 2022-01-07 11:00 | 8d | 0d |  |  |  |  |  |
| 61 | 1.5.1.2.4 | Redactar recomendaciones que se deben aplicar para el siguiente Sprint |  | 4d | 2022-01-07 11:00 | 2022-01-13 11:00 | 60 | 2022-01-07 11:00 | 2022-01-13 11:00 | 4d | 0d |  |  |  |  |  |
| 62 | 1.5.2 | **Lanzamiento** |  | 12d | 2022-01-13 11:00 | 2022-01-31 11:00 | 54 | 2022-01-13 11:00 | 2022-01-31 11:00 | 12d | 0d |  | Becarios; Ing. Informáticos; Ing. Software | 288h | 3,264 | 3,264 |
| 63 | 1.5.2.1 | **Enviar entregables** |  | 6d | 2022-01-13 11:00 | 2022-01-21 11:00 |  | 2022-01-13 11:00 | 2022-01-21 11:00 | 6d | 0d |  |  |  |  |  |
| 64 | 1.5.2.1.1 | Preparar y enviar los entregables |  | 6d | 2022-01-13 11:00 | 2022-01-21 11:00 |  | 2022-01-13 11:00 | 2022-01-21 11:00 | 6d | 0d |  |  |  |  |  |
| 65 | 1.5.2.2 | **Enviar retrospectiva del proyecto** |  | 6d | 2022-01-21 11:00 | 2022-01-31 11:00 | 63 | 2022-01-21 11:00 | 2022-01-31 11:00 | 6d | 0d |  |  |  |  |  |
| 66 | 1.5.2.2.1 | Preparar y enviar el proyecto |  | 6d | 2022-01-21 11:00 | 2022-01-31 11:00 |  | 2022-01-21 11:00 | 2022-01-31 11:00 | 6d | 0d |  |  |  |  |  |
| 67 | 1.6 | **Gestion del Sprint** |  | 200.25d | 2021-04-02 09:00 | 2022-01-07 11:00 |  | 2021-04-02 09:00 | 2022-01-07 11:00 | 200.25d | 0d |  |  |  |  |  |
| 68 | 1.6.1 | Gestion del Sprint 1 | manual | 2h | 2021-04-02 09:00 | 2021-04-02 11:00 |  | 2021-04-02 09:00 | 2021-04-02 11:00 | 2h |  | start no earlier than 2021-04-02 09:00 |  |  |  |  |
| 69 | 1.6.2 | Gestion del Sprint 2 | manual | 2h | 2021-04-09 09:00 | 2021-04-09 11:00 |  | 2021-04-09 09:00 | 2021-04-09 11:00 | 2h |  | start no earlier than 2021-04-09 09:00 |  |  |  |  |
| 70 | 1.6.3 | Gestion del Sprint 3 | manual | 2h | 2021-04-16 09:00 | 2021-04-16 11:00 |  | 2021-04-16 09:00 | 2021-04-16 11:00 | 2h |  | start no earlier than 2021-04-16 09:00 |  |  |  |  |
| 71 | 1.6.4 | Gestion del Sprint 4 | manual | 2h | 2021-04-23 09:00 | 2021-04-23 11:00 |  | 2021-04-23 09:00 | 2021-04-23 11:00 | 2h |  | start no earlier than 2021-04-23 09:00 |  |  |  |  |
| 72 | 1.6.5 | Gestion del Sprint 5 | manual | 2h | 2021-04-30 09:00 | 2021-04-30 11:00 |  | 2021-04-30 09:00 | 2021-04-30 11:00 | 2h |  | start no earlier than 2021-04-30 09:00 |  |  |  |  |
| 73 | 1.6.6 | Gestion del Sprint 6 | manual | 2h | 2021-05-07 09:00 | 2021-05-07 11:00 |  | 2021-05-07 09:00 | 2021-05-07 11:00 | 2h |  | start no earlier than 2021-05-07 09:00 |  |  |  |  |
| 74 | 1.6.7 | Gestion del Sprint 7 | manual | 2h | 2021-05-14 09:00 | 2021-05-14 11:00 |  | 2021-05-14 09:00 | 2021-05-14 11:00 | 2h |  | start no earlier than 2021-05-14 09:00 |  |  |  |  |
| 75 | 1.6.8 | Gestion del Sprint 8 | manual | 2h | 2021-05-21 09:00 | 2021-05-21 11:00 |  | 2021-05-21 09:00 | 2021-05-21 11:00 | 2h |  | start no earlier than 2021-05-21 09:00 |  |  |  |  |
| 76 | 1.6.9 | Gestion del Sprint 9 | manual | 2h | 2021-05-28 09:00 | 2021-05-28 11:00 |  | 2021-05-28 09:00 | 2021-05-28 11:00 | 2h |  | start no earlier than 2021-05-28 09:00 |  |  |  |  |
| 77 | 1.6.10 | Gestion del Sprint 10 | manual | 2h | 2021-06-04 09:00 | 2021-06-04 11:00 |  | 2021-06-04 09:00 | 2021-06-04 11:00 | 2h |  | start no earlier than 2021-06-04 09:00 |  |  |  |  |
| 78 | 1.6.11 | Gestion del Sprint 11 | manual | 2h | 2021-06-11 09:00 | 2021-06-11 11:00 |  | 2021-06-11 09:00 | 2021-06-11 11:00 | 2h |  | start no earlier than 2021-06-11 09:00 |  |  |  |  |
| 79 | 1.6.12 | Gestion del Sprint 12 | manual | 2h | 2021-06-18 09:00 | 2021-06-18 11:00 |  | 2021-06-18 09:00 | 2021-06-18 11:00 | 2h |  | start no earlier than 2021-06-18 09:00 |  |  |  |  |
| 80 | 1.6.13 | Gestion del Sprint 13 | manual | 2h | 2021-06-25 09:00 | 2021-06-25 11:00 |  | 2021-06-25 09:00 | 2021-06-25 11:00 | 2h |  | start no earlier than 2021-06-25 09:00 |  |  |  |  |
| 81 | 1.6.14 | Gestion del Sprint 14 | manual | 2h | 2021-07-02 09:00 | 2021-07-02 11:00 |  | 2021-07-02 09:00 | 2021-07-02 11:00 | 2h |  | start no earlier than 2021-07-02 09:00 |  |  |  |  |
| 82 | 1.6.15 | Gestion del Sprint 15 | manual | 2h | 2021-07-09 09:00 | 2021-07-09 11:00 |  | 2021-07-09 09:00 | 2021-07-09 11:00 | 2h |  | start no earlier than 2021-07-09 09:00 |  |  |  |  |
| 83 | 1.6.16 | Gestion del Sprint 16 | manual | 2h | 2021-07-16 09:00 | 2021-07-16 11:00 |  | 2021-07-16 09:00 | 2021-07-16 11:00 | 2h |  | start no earlier than 2021-07-16 09:00 |  |  |  |  |
| 84 | 1.6.17 | Gestion del Sprint 17 | manual | 2h | 2021-07-23 09:00 | 2021-07-23 11:00 |  | 2021-07-23 09:00 | 2021-07-23 11:00 | 2h |  | start no earlier than 2021-07-23 09:00 |  |  |  |  |
| 85 | 1.6.18 | Gestion del Sprint 18 | manual | 2h | 2021-07-30 09:00 | 2021-07-30 11:00 |  | 2021-07-30 09:00 | 2021-07-30 11:00 | 2h |  | start no earlier than 2021-07-30 09:00 |  |  |  |  |
| 86 | 1.6.19 | Gestion del Sprint 19 | manual | 2h | 2021-08-06 09:00 | 2021-08-06 11:00 |  | 2021-08-06 09:00 | 2021-08-06 11:00 | 2h |  | start no earlier than 2021-08-06 09:00 |  |  |  |  |
| 87 | 1.6.20 | Gestion del Sprint 20 | manual | 2h | 2021-08-13 09:00 | 2021-08-13 11:00 |  | 2021-08-13 09:00 | 2021-08-13 11:00 | 2h |  | start no earlier than 2021-08-13 09:00 |  |  |  |  |
| 88 | 1.6.21 | Gestion del Sprint 21 | manual | 2h | 2021-08-20 09:00 | 2021-08-20 11:00 |  | 2021-08-20 09:00 | 2021-08-20 11:00 | 2h |  | start no earlier than 2021-08-20 09:00 |  |  |  |  |
| 89 | 1.6.22 | Gestion del Sprint 22 | manual | 2h | 2021-08-27 09:00 | 2021-08-27 11:00 |  | 2021-08-27 09:00 | 2021-08-27 11:00 | 2h |  | start no earlier than 2021-08-27 09:00 |  |  |  |  |
| 90 | 1.6.23 | Gestion del Sprint 23 | manual | 2h | 2021-09-03 09:00 | 2021-09-03 11:00 |  | 2021-09-03 09:00 | 2021-09-03 11:00 | 2h |  | start no earlier than 2021-09-03 09:00 |  |  |  |  |
| 91 | 1.6.24 | Gestion del Sprint 24 | manual | 2h | 2021-09-10 09:00 | 2021-09-10 11:00 |  | 2021-09-10 09:00 | 2021-09-10 11:00 | 2h |  | start no earlier than 2021-09-10 09:00 |  |  |  |  |
| 92 | 1.6.25 | Gestion del Sprint 25 | manual | 2h | 2021-09-17 09:00 | 2021-09-17 11:00 |  | 2021-09-17 09:00 | 2021-09-17 11:00 | 2h |  | start no earlier than 2021-09-17 09:00 |  |  |  |  |
| 93 | 1.6.26 | Gestion del Sprint 26 | manual | 2h | 2021-09-24 09:00 | 2021-09-24 11:00 |  | 2021-09-24 09:00 | 2021-09-24 11:00 | 2h |  | start no earlier than 2021-09-24 09:00 |  |  |  |  |
| 94 | 1.6.27 | Gestion del Sprint 27 | manual | 2h | 2021-10-01 09:00 | 2021-10-01 11:00 |  | 2021-10-01 09:00 | 2021-10-01 11:00 | 2h |  | start no earlier than 2021-10-01 09:00 |  |  |  |  |
| 95 | 1.6.28 | Gestion del Sprint 28 | manual | 2h | 2021-10-08 09:00 | 2021-10-08 11:00 |  | 2021-10-08 09:00 | 2021-10-08 11:00 | 2h |  | start no earlier than 2021-10-08 09:00 |  |  |  |  |
| 96 | 1.6.29 | Gestion del Sprint 29 | manual | 2h | 2021-10-15 09:00 | 2021-10-15 11:00 |  | 2021-10-15 09:00 | 2021-10-15 11:00 | 2h |  | start no earlier than 2021-10-15 09:00 |  |  |  |  |
| 97 | 1.6.30 | Gestion del Sprint 30 | manual | 2h | 2021-10-22 09:00 | 2021-10-22 11:00 |  | 2021-10-22 09:00 | 2021-10-22 11:00 | 2h |  | start no earlier than 2021-10-22 09:00 |  |  |  |  |
| 98 | 1.6.31 | Gestion del Sprint 31 | manual | 2h | 2021-10-29 09:00 | 2021-10-29 11:00 |  | 2021-10-29 09:00 | 2021-10-29 11:00 | 2h |  | start no earlier than 2021-10-29 09:00 |  |  |  |  |
| 99 | 1.6.32 | Gestion del Sprint 32 | manual | 2h | 2021-11-05 09:00 | 2021-11-05 11:00 |  | 2021-11-05 09:00 | 2021-11-05 11:00 | 2h |  | start no earlier than 2021-11-05 09:00 |  |  |  |  |
| 100 | 1.6.33 | Gestion del Sprint 33 | manual | 2h | 2021-11-12 09:00 | 2021-11-12 11:00 |  | 2021-11-12 09:00 | 2021-11-12 11:00 | 2h |  | start no earlier than 2021-11-12 09:00 |  |  |  |  |
| 101 | 1.6.34 | Gestion del Sprint 34 | manual | 2h | 2021-11-19 09:00 | 2021-11-19 11:00 |  | 2021-11-19 09:00 | 2021-11-19 11:00 | 2h |  | start no earlier than 2021-11-19 09:00 |  |  |  |  |
| 102 | 1.6.35 | Gestion del Sprint 35 | manual | 2h | 2021-11-26 09:00 | 2021-11-26 11:00 |  | 2021-11-26 09:00 | 2021-11-26 11:00 | 2h |  | start no earlier than 2021-11-26 09:00 |  |  |  |  |
| 103 | 1.6.36 | Gestion del Sprint 36 | manual | 2h | 2021-12-03 09:00 | 2021-12-03 11:00 |  | 2021-12-03 09:00 | 2021-12-03 11:00 | 2h |  | start no earlier than 2021-12-03 09:00 |  |  |  |  |
| 104 | 1.6.37 | Gestion del Sprint 37 | manual | 2h | 2021-12-10 09:00 | 2021-12-10 11:00 |  | 2021-12-10 09:00 | 2021-12-10 11:00 | 2h |  | start no earlier than 2021-12-10 09:00 |  |  |  |  |
| 105 | 1.6.38 | Gestion del Sprint 38 | manual | 2h | 2021-12-17 09:00 | 2021-12-17 11:00 |  | 2021-12-17 09:00 | 2021-12-17 11:00 | 2h |  | start no earlier than 2021-12-17 09:00 |  |  |  |  |
| 106 | 1.6.39 | Gestion del Sprint 39 | manual | 2h | 2021-12-24 09:00 | 2021-12-24 11:00 |  | 2021-12-24 09:00 | 2021-12-24 11:00 | 2h |  | start no earlier than 2021-12-24 09:00 |  |  |  |  |
| 107 | 1.6.40 | Gestion del Sprint 40 | manual | 2h | 2021-12-31 09:00 | 2021-12-31 11:00 |  | 2021-12-31 09:00 | 2021-12-31 11:00 | 2h |  | start no earlier than 2021-12-31 09:00 |  |  |  |  |
| 108 | 1.6.41 | Gestion del Sprint 41 | manual | 2h | 2022-01-07 09:00 | 2022-01-07 11:00 |  | 2022-01-07 09:00 | 2022-01-07 11:00 | 2h |  | start no earlier than 2022-01-07 09:00 |  |  |  |  |
